Schedule from MS Project, 2018-01-30 to 2019-02-28.
Umbra Cuscinetti S.p.A.

## Calendars

- Standard: Mon-Fri 08:00-12:00, 13:00-17:00; Sat-Sun off.

## Resources

| Resource |
| --- |
| UMBRA |
| SERMS |
| CELAB |
| UMBRA + CEM |
| CEM + EMCC |
| EPI |
| EPI, UMBRA |

## Schedule

| ID | WBS | Task | Type | Duration | Start | Finish | Predecessors | Total slack | Free slack | Constraint | Resources | Work |
| --- | --- | --- | --- | --- | --- | --- | --- | --- | --- | --- | --- | --- |
| 1 | 1 | **PBCU Re-design** |  | 283d | 2018-01-30 | 2019-02-28 |  | 0d |  |  |  | 2200h |
| 2 | 1.1 | Modification Agreed | milestone | 10d | 2018-01-30 | 2018-02-12 |  | 0d |  | start no earlier than 2018-01-30 | EPI; UMBRA | 160h |
| 3 | 1.2 | Change Request |  | 5d | 2018-02-13 | 2018-02-19 | 2 | 0d |  |  | UMBRA | 40h |
| 4 | 1.3 | Change Proposal |  | 15d | 2018-02-20 | 2018-03-12 | 3 | 253d |  |  | EPI | 120h |
| 5 | 1.4 | Schematics Update |  | 15d | 2018-02-20 | 2018-03-12 | 3 | 0d |  |  |  |  |
| 6 | 1.5 | Schematics Approval (EPI) |  | 5d | 2018-03-13 | 2018-03-19 | 5 | 0d |  |  | EPI | 40h |
| 7 | 1.6 | Layout update |  | 15d | 2018-03-20 | 2018-04-09 | 6 | 0d |  |  |  |  |
| 8 | 1.7 | Model A production |  | 30d | 2018-04-10 | 2018-05-21 | 7 | 0d |  |  |  |  |
| 9 | 1.8 | Integration test on Model A |  | 15d | 2018-05-22 | 2018-06-11 | 8 | 0d |  |  |  |  |
| 10 | 1.9 | Design Update after integration (if needed) |  | 5d | 2018-06-12 | 2018-06-18 | 9 | 0d |  |  |  |  |
| 11 | 1.10 | Model B production |  | 20d | 2018-06-19 | 2018-07-16 | 10 | 0d |  |  |  |  |
| 12 | 1.11 | Integration Test on Model B Test |  | 5d | 2018-07-17 | 2018-07-23 | 11 | 0d |  |  |  |  |
| 13 | 1.12 | **Certification Tests** |  | 108d | 2018-07-24 | 2018-12-20 |  | 0d |  |  |  | 1040h |
| 14 | 1.12.1 | **Test unit #1 (PBCU + PBU)** |  | 57d | 2018-07-24 | 2018-10-10 |  | 0d |  |  |  | 296h |
| 15 | 1.12.1.1 | Thermal cycle (PBK) |  | 20d | 2018-07-24 | 2018-08-20 | 12 | 0d |  | start no earlier than 2017-04-05 | UMBRA | 160h |
| 16 | 1.12.1.2 | Vibration (PBK) |  | 15d | 2018-08-21 | 2018-09-10 | 15 | 86d | 0d | finish no earlier than 2009-02-06 | UMBRA | 120h |
| 17 | 1.12.1.3 | Operational shock & Crash Safety |  | 2d | 2018-09-11 | 2018-09-12 | 16 | 86d | 0d | start no earlier than 2010-01-11 | UMBRA | 16h |
| 18 | 1.12.1.4 | Engine Core Blade Out, Propeller Sheath Loss |  | 5d | 2018-09-13 | 2018-09-19 | 17 | 86d | 0d |  |  |  |
| 19 | 1.12.1.5 | Test Report |  | 15d | 2018-09-20 | 2018-10-10 | 18 | 101d |  |  |  |  |
| 20 | 1.12.2 | **Test unit #2 (PBCU + PBU)** |  | 108d | 2018-07-24 | 2018-12-20 |  | 0d |  |  |  | 744h |
| 21 | 1.12.2.1 | Room Temperature Demonstration (PBU + PBCU) |  | 5d | 2018-07-24 | 2018-07-30 | 15SS | 0d |  | start no earlier than 2010-01-11 | UMBRA | 40h |
| 22 | 1.12.2.2 | Humidity (By Analysis?) |  | 23d | 2018-07-31 | 2018-08-30 | 21 | 0d |  | start no earlier than 2010-01-18 | UMBRA | 184h |
| 23 | 1.12.2.3 | Temperature / Altitude (PBCU + Harnesses) |  | 5d | 2018-08-31 | 2018-09-06 | 22 | 0d |  | start no earlier than 2009-01-07 | SERMS | 40h |
| 24 | 1.12.2.4 | Salt spray (by analysis?) |  | 5d | 2018-09-07 | 2018-09-13 | 23 | 0d |  | start no earlier than 2010-01-11 | UMBRA | 40h |
| 25 | 1.12.2.5 | Sand and dust (By analysis?) |  | 10d | 2018-09-14 | 2018-09-27 | 24 | 0d |  | start no earlier than 2008-11-03 | UMBRA | 80h |
| 26 | 1.12.2.6 | Power input (PBCU) |  | 15d | 2018-09-28 | 2018-10-18 | 25 | 0d |  | finish no earlier than 2008-12-23 | UMBRA | 120h |
| 27 | 1.12.2.7 | EMI, HIRF and Lightning (PBK) |  | 30d | 2018-10-19 | 2018-11-29 | 26 | 0d |  | finish no earlier than 2008-12-12 | UMBRA | 240h |

| ID | WBS | Task | Type | Duration | Start | Finish | Predecessors | Total slack | Free slack | Constraint | Resources | Work |
| --- | --- | --- | --- | --- | --- | --- | --- | --- | --- | --- | --- | --- |
| 28 | 1.12.2.8 | **Test unit #2 or #3** |  | 30d | 2018-09-20 | 2018-10-31 | 18 | 86d |  |  |  |  |
| 29 | 1.12.2.8.1 | **Engineering tests** |  | 30d | 2018-09-20 | 2018-10-31 |  | 86d |  |  |  |  |
| 30 | 1.12.2.8.1.1 | LDC 106 |  | 3d | 2018-09-20 | 2018-09-24 |  | 107d | 0d |  |  |  |
| 31 | 1.12.2.8.1.2 | LDC 108 |  | 3d | 2018-09-25 | 2018-09-27 | 30 | 107d | 0d | start no earlier than 2011-03-14 |  |  |
| 32 | 1.12.2.8.1.3 | LDC 109 |  | 3d | 2018-09-28 | 2018-10-02 | 31 | 107d |  |  |  |  |
| 33 | 1.12.2.8.1.4 | Endurance PBCU + PBU (cycle TBD) - Test unit #3 |  | 30d | 2018-09-20 | 2018-10-31 | 12 | 86d |  |  |  |  |
| 34 | 1.12.2.9 | Test Report |  | 15d | 2018-11-30 | 2018-12-20 | 27 | 0d |  |  |  |  |
| 35 | 1.13 | Standardization -09 | milestone | 50d | 2018-12-21 | 2019-02-28 | 34 | 0d |  |  | EPI; UMBRA | 800h |
