Schedule from MS Project, 2017-04-20 to 2018-05-07.
Umbra Cuscinetti S.p.A.

## Calendars

- Standard: Mon-Fri 08:00-12:00, 13:00-17:00; Sat-Sun off. Exceptions (off unless hours are given): 2008-04-25 to 2017-04-25 (25 April, recurring), 2008-05-01 to 2017-05-01 (Primo maggio, recurring), 2008-12-25 to 2017-12-25 (Christmas Day, recurring), 2008-12-26 to 2017-12-26 (Boxing Da, recurring).

## Resources

| Resource |
| --- |
| UMBRA |
| SERMS |
| CELAB |
| UMBRA + CEM |
| CEM + EMCC |
| EPI |
| EPI, UMBRA |

## Schedule

| ID | WBS | Task | Type | Duration | Start | Finish | Predecessors | Total slack | Free slack | Constraint | Resources | Work |
| --- | --- | --- | --- | --- | --- | --- | --- | --- | --- | --- | --- | --- |
| 1 | 1 | **PBCU Re-design** |  | 269d? | 2017-04-20 | 2018-05-07 |  | 0d |  |  |  | 2096h |
| 2 | 1.1 | Modification Agreed | milestone | 1d? | 2017-04-20 | 2017-04-20 |  | 0d |  | finish no earlier than 2017-04-20 | EPI; UMBRA | 16h |
| 3 | 1.2 | Change Request |  | 5d | 2017-04-21 | 2017-04-28 | 2 | 0d |  |  | UMBRA | 40h |
| 4 | 1.3 | Change Proposal |  | 15d | 2017-05-02 | 2017-05-22 | 3 | 248d |  |  | EPI | 120h |
| 5 | 1.4 | Schematics Update |  | 10d | 2017-05-02 | 2017-05-15 | 3 | 0d |  |  |  |  |
| 6 | 1.5 | Schematics Approval (EPI) |  | 10d | 2017-05-16 | 2017-05-29 | 5 | 0d |  |  | EPI | 80h |
| 7 | 1.6 | Layout update |  | 10d | 2017-05-30 | 2017-06-12 | 6 | 0d |  |  |  |  |
| 8 | 1.7 | Model A production |  | 30d | 2017-06-13 | 2017-07-24 | 7 | 0d |  |  |  |  |
| 9 | 1.8 | Integration test on Model A |  | 15d | 2017-07-25 | 2017-08-14 | 8 | 0d |  |  |  |  |
| 10 | 1.9 | Design Update after integration (if needed) |  | 5d | 2017-08-15 | 2017-08-21 | 9 | 0d |  |  |  |  |
| 11 | 1.10 | Model B production |  | 20d | 2017-08-22 | 2017-09-18 | 10 | 0d |  |  |  |  |
| 12 | 1.11 | Integration Test on Model B Test |  | 5d | 2017-09-19 | 2017-09-25 | 11 | 0d |  |  |  |  |
| 13 | 1.12 | **Certification Tests** |  | 108d | 2017-09-26 | 2018-02-26 |  | 0d |  |  |  | 1040h |
| 14 | 1.12.1 | **Test unit #1 (PBCU + PBU)** |  | 57d | 2017-09-26 | 2017-12-13 |  | 0d |  |  |  | 296h |
| 15 | 1.12.1.1 | Thermal cycle (PBK) |  | 20d | 2017-09-26 | 2017-10-23 | 12 | 0d |  | start no earlier than 2017-04-05 | UMBRA | 160h |
| 16 | 1.12.1.2 | Vibration (PBK) |  | 15d | 2017-10-24 | 2017-11-13 | 15 | 86d | 0d | finish no earlier than 2009-02-06 | UMBRA | 120h |
| 17 | 1.12.1.3 | Operational shock & Crash Safety |  | 2d | 2017-11-14 | 2017-11-15 | 16 | 86d | 0d | start no earlier than 2010-01-11 | UMBRA | 16h |
| 18 | 1.12.1.4 | Engine Core Blade Out, Propeller Sheath Loss |  | 5d | 2017-11-16 | 2017-11-22 | 17 | 86d | 0d |  |  |  |
| 19 | 1.12.1.5 | Test Report |  | 15d | 2017-11-23 | 2017-12-13 | 18 | 101d |  |  |  |  |
| 20 | 1.12.2 | **Test unit #2 (PBCU + PBU)** |  | 108d | 2017-09-26 | 2018-02-26 |  | 0d |  |  |  | 744h |
| 21 | 1.12.2.1 | Room Temperature Demonstration (PBU + PBCU) |  | 5d | 2017-09-26 | 2017-10-02 | 15SS | 0d |  | start no earlier than 2010-01-11 | UMBRA | 40h |
| 22 | 1.12.2.2 | Humidity (By Analysis?) |  | 23d | 2017-10-03 | 2017-11-02 | 21 | 0d |  | start no earlier than 2010-01-18 | UMBRA | 184h |
| 23 | 1.12.2.3 | Temperature / Altitude (PBCU + Harnesses) |  | 5d | 2017-11-03 | 2017-11-09 | 22 | 0d |  | start no earlier than 2009-01-07 | SERMS | 40h |
| 24 | 1.12.2.4 | Salt spray (by analysis?) |  | 5d | 2017-11-10 | 2017-11-16 | 23 | 0d |  | start no earlier than 2010-01-11 | UMBRA | 40h |
| 25 | 1.12.2.5 | Sand and dust (By analysis?) |  | 10d | 2017-11-17 | 2017-11-30 | 24 | 0d |  | start no earlier than 2008-11-03 | CELAB | 80h |
| 26 | 1.12.2.6 | Power input (PBCU) |  | 15d | 2017-12-01 | 2017-12-21 | 25 | 0d |  | finish no earlier than 2008-12-23 | UMBRA + CEM | 120h |
| 27 | 1.12.2.7 | EMI, HIRF and Lightning (PBK) |  | 30d | 2017-12-22 | 2018-02-05 | 26 | 0d |  | finish no earlier than 2008-12-12 | CEM + EMCC | 240h |

| ID | WBS | Task | Type | Duration | Start | Finish | Predecessors | Total slack | Free slack | Constraint | Resources | Work |
| --- | --- | --- | --- | --- | --- | --- | --- | --- | --- | --- | --- | --- |
| 28 | 1.12.2.8 | **Test unit #2 or #3** |  | 30d | 2017-11-23 | 2018-01-05 | 18 | 86d |  |  |  |  |
| 29 | 1.12.2.8.1 | **Engineering tests** |  | 30d | 2017-11-23 | 2018-01-05 |  | 86d |  |  |  |  |
| 30 | 1.12.2.8.1.1 | LDC 106 |  | 3d | 2017-11-23 | 2017-11-27 |  | 107d | 0d |  |  |  |
| 31 | 1.12.2.8.1.2 | LDC 108 |  | 3d | 2017-11-28 | 2017-11-30 | 30 | 107d | 0d | start no earlier than 2011-03-14 |  |  |
| 32 | 1.12.2.8.1.3 | LDC 109 |  | 3d | 2017-12-01 | 2017-12-05 | 31 | 107d |  |  |  |  |
| 33 | 1.12.2.8.1.4 | Endurance PBCU + PBU (cycle TBD) - Test unit #3 |  | 30d | 2017-11-23 | 2018-01-05 | 12 | 86d |  |  |  |  |
| 34 | 1.12.2.9 | Test Report |  | 15d | 2018-02-06 | 2018-02-26 | 27 | 0d |  |  |  |  |
| 35 | 1.13 | Standardization -09 | milestone | 50d | 2018-02-27 | 2018-05-07 | 34 | 0d |  |  | EPI; UMBRA | 800h |
