# PBCU Redesign_SW

Schedule from MS Project, 2015-07-28 to 2016-07-12, A marks actual dates.
Umbra Cuscinetii S.p.A.

## Calendars

- Standard: Mon-Fri 08:00-12:00, 13:00-17:00; Sat-Sun off. Exceptions (off unless hours are given): 2008-04-25 to 2047-04-25 (25 April, recurring), 2008-05-01 to 2047-05-01 (Primo maggio, recurring), 2008-12-25 to 2017-12-25 (Christmas Day, recurring), 2011-01-06 to 2045-01-06 (Epifania 2011, recurring), 2011-01-24 to 2017-01-24 (Patrono, recurring), 2015-12-23 to 2016-01-11 (Company Shut Down - Winter).

## Resources

| Resource |
| --- |
| Umbra |
| Xibo |
| Xibo, Umbra |
| EPI |
| Xibo, Umbraù |
| Xibo, Umbra, EPI |
| Umbra, EPI |
| 14 |

## Schedule

| ID | WBS | Task | Type | Duration | Start | Finish | Predecessors | Complete | Remaining | Total slack | Free slack | Constraint |
| --- | --- | --- | --- | --- | --- | --- | --- | --- | --- | --- | --- | --- |
| 1 | 1 | **PBCU -05 Software Life Cycle** |  | 236d | 2015-07-28 A | 2016-07-12 |  | 10% | 211.86d | 0d |  |  |
| 2 | 1.1 | Plan Update according to EASA Assessment |  | 7d | 2016-07-04 | 2016-07-12 |  |  |  | 0d |  | start no earlier than 2016-07-04 |
| 3 | 1.2 | System Software Requirements Data (SSRD) |  | 7d | 2015-07-28 A | 2015-08-05 A | 2 | 100% |  |  |  |  |
| 4 | 1.3 | Software Requirements Data (SRD) |  | 7d | 2015-07-28 A | 2015-08-12 | 3 | 29% | 5d | 157d | 0d |  |
| 5 | 1.4 | Requirements Traceability Matrix (RTM) |  | 2d | 2015-08-13 | 2015-08-14 | 4 |  |  | 157d | 0d |  |
| 6 | 1.5 | Requirements Review (SRR) | milestone | 2d | 2015-08-17 | 2015-08-18 | 5 |  |  | 157d | 0d |  |
| 7 | 1.6 | EPI document Review and Approval |  | 2d | 2015-08-19 | 2015-08-20 | 6 |  |  | 157d | 0d |  |
| 8 | 1.7 | Meeting SOI #1 & #2 | milestone | 2d | 2015-08-21 | 2015-08-24 | 7 |  |  | 157d | 0d |  |
| 9 | 1.8 | Software Design Description (SDD) |  | 9d | 2015-08-25 | 2015-09-04 | 8 |  |  | 157d | 0d |  |
| 10 | 1.9 | SW development & integration |  | 15d | 2015-09-07 | 2015-09-25 | 9 |  |  | 157d | 98d |  |
| 11 | 1.10 | Software Verification Cases & Procedures (SVCP) |  | 5d | 2016-03-02 | 2016-03-08 | 10 |  |  | 59d | 0d | start no earlier than 2016-03-02 |
| 12 | 1.11 | Test rig update |  | 5d | 2016-03-09 | 2016-03-15 | 11 |  |  | 59d | 0d | start no earlier than 2015-12-21 |
| 13 | 1.12 | Test Coverage Matrix (TCM) |  | 1d | 2016-03-16 | 2016-03-16 | 12 |  |  | 59d | 0d |  |
| 14 | 1.13 | TRR | milestone | 2d | 2016-03-17 | 2016-03-18 | 13 |  |  | 59d | 0d |  |
| 15 | 1.14 | Certification Test (Run for score) |  | 5d | 2016-03-21 | 2016-03-25 | 14 |  |  | 59d | 0d |  |
| 16 | 1.15 | SVR Preparation |  | 3d | 2016-03-28 | 2016-03-30 | 15 |  |  | 59d | 0d |  |
| 17 | 1.16 | Meeting SOI#3 - at Umbra | milestone | 2d | 2016-03-31 | 2016-04-01 | 16 |  |  | 59d | 0d |  |
| 18 | 1.17 | Software Configuration Index (SCI) |  | 4d | 2016-04-04 | 2016-04-07 | 17 |  |  | 59d | 0d |  |
| 19 | 1.18 | Software Accomplishment Summary (SAS) |  | 3d | 2016-04-08 | 2016-04-12 | 18 |  |  | 59d | 0d |  |
| 20 | 1.19 | Software Conformity Review (SCR) | milestone | 2d | 2016-04-13 | 2016-04-14 | 19 |  |  | 59d | 0d |  |
| 21 | 1.20 | Post SCR document updating |  | 1d | 2016-04-15 | 2016-04-15 | 20 |  |  | 59d | 0d |  |
| 22 | 1.21 | Meeting SOI#4 - at Umbra | milestone | 2d | 2016-04-18 | 2016-04-19 | 21 |  |  | 59d |  |  |
